# Bifacial Solar Characterizer

Schedule from GanttProject, 2015-09-28 to 2016-04-08.
Nate and Tyler
Holidays every year on 01-01, 07-01, 10-08, 12-25

## Calendars

- Project calendar: Mon-Fri working; Sat-Sun off.

## Schedule

| ID | WBS | Task | Duration | Start | Finish | Predecessors | Baseline start | Baseline finish | Baseline duration |
| --- | --- | --- | --- | --- | --- | --- | --- | --- | --- |
| 1 | 1 | **Draft Proposal** | 3d | 2015-09-30 | 2015-10-02 |  | 2015-09-30 | 2015-10-02 | 3d |
| 2 | 1.1 | Schedule | 1d | 2015-09-30 | 2015-09-30 |  | 2015-09-30 | 2015-09-30 | 1d |
| 3 | 1.2 | Background | 1d | 2015-10-02 | 2015-10-02 |  | 2015-10-02 | 2015-10-02 | 1d |
| 4 | 2 | Proposal | 4d | 2015-10-05 | 2015-10-09 | 1 | 2015-10-05 | 2015-10-09 | 4d |
| 5 | 3 | Identify Customer Requirements | 5d | 2015-09-28 | 2015-10-02 |  | 2015-09-28 | 2015-10-02 | 5d |
| 6 | 4 | **Physical - Mechanical Design** | 43d | 2015-10-05 | 2015-12-03 | 5 | 2015-10-05 | 2015-12-14 | 50d |
| 7 | 4.1 | **Linear motion** | 24d | 2015-10-05 | 2015-11-06 |  | 2015-10-05 | 2015-11-06 | 24d |
| 8 | 4.1.1 | Identify possible options | 2d | 2015-10-05 | 2015-10-06 |  | 2015-10-05 | 2015-10-06 | 2d |
| 9 | 4.1.2 | Design | 5d | 2015-10-07 | 2015-10-14 | 5, 8 | 2015-10-07 | 2015-10-14 | 5d |
| 10 | 4.1.3 | Procure components | 10d | 2015-10-15 | 2015-10-28 | 9 | 2015-10-15 | 2015-10-28 | 10d |
| 11 | 4.1.4 | Test | 5d | 2015-10-29 | 2015-11-04 | 10 | 2015-10-29 | 2015-11-04 | 5d |
| 12 | 4.1.5 | Document | 2d | 2015-11-05 | 2015-11-06 | 11 | 2015-11-05 | 2015-11-06 | 2d |
| 13 | 4.2 | **Rotational motion** | 29d | 2015-10-05 | 2015-11-13 |  | 2015-10-05 | 2015-11-13 | 29d |
| 14 | 4.2.1 | Identify possible options | 3d | 2015-10-05 | 2015-10-07 |  | 2015-10-05 | 2015-10-07 | 3d |
| 15 | 4.2.2 | Design | 7d | 2015-10-09 | 2015-10-19 | 5, 14 | 2015-10-09 | 2015-10-19 | 7d |
| 16 | 4.2.3 | Procure components | 10d | 2015-10-20 | 2015-11-02 | 15 | 2015-10-20 | 2015-11-02 | 10d |
| 17 | 4.2.4 | Test | 7d | 2015-11-03 | 2015-11-11 | 16 | 2015-11-03 | 2015-11-11 | 7d |
| 18 | 4.2.5 | Document | 2d | 2015-11-12 | 2015-11-13 | 17 | 2015-11-12 | 2015-11-13 | 2d |
| 19 | 4.3 | **Position determination** | 31d | 2015-10-09 | 2015-11-20 |  | 2015-10-20 | 2015-12-01 | 31d |
| 20 | 4.3.1 | Identify possible options | 5d | 2015-10-09 | 2015-10-15 |  | 2015-10-20 | 2015-10-26 | 5d |
| 21 | 4.3.2 | Design | 7d | 2015-10-16 | 2015-10-26 | 5, 20 | 2015-10-27 | 2015-11-04 | 7d |
| 22 | 4.3.3 | Procure components | 10d | 2015-10-27 | 2015-11-09 | 21 | 2015-11-05 | 2015-11-18 | 10d |
| 23 | 4.3.4 | Test | 7d | 2015-11-10 | 2015-11-18 | 22 | 2015-11-19 | 2015-11-27 | 7d |
| 24 | 4.3.5 | pDocument | 2d | 2015-11-19 | 2015-11-20 | 23 | 2015-11-30 | 2015-12-01 | 2d |

| ID | WBS | Task | Duration | Start | Finish | Predecessors | Baseline start | Baseline finish | Baseline duration |
| --- | --- | --- | --- | --- | --- | --- | --- | --- | --- |
| 25 | 4.4 | **Frame / Mounting** | 41d | 2015-10-06 | 2015-12-02 |  | 2015-10-06 | 2015-12-11 | 48d |
| 26 | 4.4.1 | Identify possible options | 2d | 2015-10-06 | 2015-10-07 |  | 2015-10-06 | 2015-10-07 | 2d |
| 27 | 4.4.2 | Design | 5d | 2015-10-27 | 2015-11-02 | 9, 15, 21, 26 | 2015-11-05 | 2015-11-11 | 5d |
| 28 | 4.4.3 | Procure components | 20d | 2015-11-03 | 2015-11-30 | 27 | 2015-11-12 | 2015-12-09 | 20d |
| 29 | 4.4.4 | Test | 1d | 2015-12-01 | 2015-12-01 | 28 | 2015-12-10 | 2015-12-10 | 1d |
| 30 | 4.4.5 | Document | 1d | 2015-12-02 | 2015-12-02 | 29 | 2015-12-11 | 2015-12-11 | 1d |
| 31 | 4.5 | Implement Mechanical Design | 1d | 2015-12-03 | 2015-12-03 | 11, 17, 23, 30 | 2015-12-14 | 2015-12-14 | 1d |
| 32 | 5 | **Electronic / Interface design** | 56d | 2015-10-06 | 2015-12-23 | 5 | 2015-10-06 | 2016-01-18 | 72d |
| 33 | 5.1 | **Processor** | 19d | 2015-10-06 | 2015-11-02 |  | 2015-10-06 | 2015-11-02 | 19d |
| 34 | 5.1.1 | Identify possible options | 3d | 2015-10-06 | 2015-10-09 |  | 2015-10-06 | 2015-10-09 | 3d |
| 35 | 5.1.2 | Choose | 1d | 2015-10-12 | 2015-10-12 | 34 | 2015-10-12 | 2015-10-12 | 1d |
| 36 | 5.1.3 | Procure component | 10d | 2015-10-13 | 2015-10-26 | 35 | 2015-10-13 | 2015-10-26 | 10d |
| 37 | 5.1.4 | Test | 2d | 2015-10-27 | 2015-10-28 | 36 | 2015-10-27 | 2015-10-28 | 2d |
| 38 | 5.1.5 | Document | 3d | 2015-10-29 | 2015-11-02 | 37 | 2015-10-29 | 2015-11-02 | 3d |
| 39 | 5.2 | **Solar Sensor** | 26d | 2015-10-06 | 2015-11-11 |  | 2015-10-06 | 2015-11-11 | 26d |
| 40 | 5.2.1 | Identify possible options | 5d | 2015-10-06 | 2015-10-13 |  | 2015-10-06 | 2015-10-13 | 5d |
| 41 | 5.2.2 | Choose | 2d | 2015-10-14 | 2015-10-15 | 40 | 2015-10-14 | 2015-10-15 | 2d |
| 42 | 5.2.3 | Procure component | 15d | 2015-10-16 | 2015-11-05 | 41 | 2015-10-16 | 2015-11-05 | 15d |
| 43 | 5.2.4 | Test | 2d | 2015-11-06 | 2015-11-09 | 42 | 2015-11-06 | 2015-11-09 | 2d |
| 44 | 5.2.5 | Document | 2d | 2015-11-10 | 2015-11-11 | 43 | 2015-11-10 | 2015-11-11 | 2d |
| 45 | 5.3 | **Electronic Connections / Interfacing** | 32d | 2015-11-10 | 2015-12-23 |  | 2015-12-02 | 2016-01-18 | 32d |
| 46 | 5.3.1 | Identify possible options | 2d | 2015-11-10 | 2015-11-11 | 10, 16, 22, 36, 42 | 2015-12-02 | 2015-12-03 | 2d |
| 47 | 5.3.2 | Design | 7d | 2015-11-12 | 2015-11-20 | 46 | 2015-12-04 | 2015-12-14 | 7d |
| 48 | 5.3.3 | Procure parts / Assemble | 10d | 2015-11-23 | 2015-12-04 | 47 | 2015-12-15 | 2015-12-29 | 10d |
| 49 | 5.3.4 | Test | 5d | 2015-12-07 | 2015-12-11 | 48 | 2015-12-30 | 2016-01-06 | 5d |
| 50 | 5.3.5 | Document | 1d | 2015-12-14 | 2015-12-14 | 49 | 2016-01-07 | 2016-01-07 | 1d |
| 51 | 5.3.6 | Implement | 7d | 2015-12-15 | 2015-12-23 | 50 | 2016-01-08 | 2016-01-18 | 7d |

| ID | WBS | Task | Duration | Start | Finish | Predecessors | Baseline start | Baseline finish | Baseline duration |
| --- | --- | --- | --- | --- | --- | --- | --- | --- | --- |
| 52 | 6 | **Software Design** | 37d | 2015-12-24 | 2016-02-16 | 5 | 2016-01-19 | 2016-03-09 | 37d |
| 53 | 6.1 | Identify Design options | 5d | 2015-12-24 | 2015-12-31 | 51 | 2016-01-19 | 2016-01-25 | 5d |
| 54 | 6.2 | Design | 10d | 2016-01-04 | 2016-01-15 | 53 | 2016-01-26 | 2016-02-08 | 10d |
| 55 | 6.3 | Test | 15d | 2016-01-18 | 2016-02-05 | 54 | 2016-02-09 | 2016-02-29 | 15d |
| 56 | 6.4 | Document | 7d | 2016-02-08 | 2016-02-16 | 55 | 2016-03-01 | 2016-03-09 | 7d |
| 57 | 7 | Software Implementation / Mechanical - Electrical changes | 10d | 2016-02-17 | 2016-03-01 | 56 | 2016-03-10 | 2016-03-23 | 10d |
| 58 | 8 | Fall Progress Report | 10d | 2015-11-26 | 2015-12-09 |  | 2015-11-26 | 2015-12-09 | 10d |
| 59 | 9 | Draft Final Report | 22d | 2016-02-12 | 2016-03-14 |  | 2016-02-12 | 2016-03-14 | 22d |
| 60 | 10 | Final Report | 10d | 2016-03-28 | 2016-04-08 | 59 | 2016-03-28 | 2016-04-08 | 10d |
| 61 | 11 | Poster Fair | 19d | 2016-02-23 | 2016-03-18 |  | 2016-02-23 | 2016-03-18 | 19d |
